# mem spinal cord project

Schedule from GanttProject, 2023-11-27 to 2024-08-06, baseline: rainy.
Holidays every year on 01-01, 01-02, 01-07, 02-15, 02-16, 05-01, 05-02, 11-11

## Calendars

- Project calendar: Mon-Fri working; Sat-Sun off.

## Schedule

| ID | WBS | Task | Type | Duration | Start | Finish | Predecessors | Complete | Baseline start | Baseline finish | Baseline duration |
| --- | --- | --- | --- | --- | --- | --- | --- | --- | --- | --- | --- |
| 1 | 1 | **B-model develpment** |  | 53d | 2023-11-27 | 2024-02-09 |  | 2% | 2023-11-27 | 2024-02-09 | 53d |
| 2 | 1.1 | Ia STDP fix |  | 15d | 2023-11-27 | 2023-12-15 |  | 10% | 2023-11-27 | 2023-12-15 | 15d |
| 3 | 1.2 | Cut STDP fix |  | 7d | 2023-12-18 | 2023-12-26 | 2 |  | 2023-12-18 | 2023-12-26 | 7d |
| 4 | 1.3 | BS->F STDP |  | 3d | 2023-12-27 | 2023-12-29 | 3 |  | 2023-12-27 | 2023-12-29 | 3d |
| 5 | 1.4 | BS->E STDP |  | 2d | 2024-01-03 | 2024-01-04 | 4 |  | 2024-01-03 | 2024-01-04 | 2d |
| 6 | 1.5 | Add 2nd leg |  | 2d | 2024-01-05 | 2024-01-08 | 3, 4, 5 |  | 2024-01-05 | 2024-01-08 | 2d |
| 7 | 1.6 | Commisural projections |  | 2d | 2024-01-09 | 2024-01-10 | 6 |  | 2024-01-09 | 2024-01-10 | 2d |
| 8 | 1.7 | Balance legs |  | 2d | 2024-01-11 | 2024-01-12 | 7 |  | 2024-01-11 | 2024-01-12 | 2d |
| 9 | 1.8 | Debug 2 legs |  | 10d | 2024-01-15 | 2024-01-26 | 8 |  | 2024-01-15 | 2024-01-26 | 10d |
| 10 | 1.9 | Complete B-model | milestone | 0d | 2024-02-12 | 2024-02-12 | 11 |  | 2024-02-12 | 2024-02-12 | 0d |
| 11 | 1.10 | Debug STDP complete model |  | 10d | 2024-01-29 | 2024-02-09 | 9 |  | 2024-01-29 | 2024-02-09 | 10d |
| 12 | 2 | **Memristors** |  | 80d | 2023-11-27 | 2024-03-21 |  |  | 2023-11-27 | 2024-03-21 | 80d |
| 13 | 2.1 | 1 memristor |  | 5d | 2023-11-27 | 2023-12-01 |  |  | 2023-11-27 | 2023-12-01 | 5d |
| 14 | 2.2 | 1 memristor test |  | 10d | 2023-12-04 | 2023-12-15 | 13 |  | 2023-12-04 | 2023-12-15 | 10d |
| 15 | 2.3 | 8 mem fubrication (E) |  | 10d | 2023-12-18 | 2023-12-29 | 14 |  | 2023-12-18 | 2023-12-29 | 10d |
| 16 | 2.4 | 8 mem test (E) |  | 10d | 2024-01-03 | 2024-01-16 | 15 |  | 2024-01-03 | 2024-01-16 | 10d |
| 17 | 2.5 | + 12 mem fubrication |  | 10d | 2024-01-17 | 2024-01-30 | 16 |  | 2024-01-17 | 2024-01-30 | 10d |
| 18 | 2.6 | 20 mem test (F+E) |  | 10d | 2024-01-31 | 2024-02-13 | 17 |  | 2024-01-31 | 2024-02-13 | 10d |
| 19 | 2.7 | 40 mems fubrication |  | 10d | 2024-02-14 | 2024-02-29 | 18 |  | 2024-02-14 | 2024-02-29 | 10d |
| 20 | 2.8 | 40 mems test |  | 15d | 2024-03-01 | 2024-03-21 | 19 |  | 2024-03-01 | 2024-03-21 | 15d |
| 21 | 2.9 | 40 mems (2 legs) | milestone | 0d | 2024-03-22 | 2024-03-22 | 20 |  | 2024-03-22 | 2024-03-22 | 0d |
| 22 | 3 | **Mem neurons** |  | 82d | 2023-11-27 | 2024-03-25 |  |  | 2023-11-27 | 2024-03-25 | 82d |
| 23 | 3.1 | negotiate parameters of mem neurons |  | 2d | 2023-11-27 | 2023-11-28 |  |  | 2023-11-27 | 2023-11-28 | 2d |
| 24 | 3.2 | Rework mem neuron sch |  | 10d | 2023-11-29 | 2023-12-12 | 23 |  | 2023-11-29 | 2023-12-12 | 10d |
| 25 | 3.3 | Design E neurons |  | 5d | 2023-12-13 | 2023-12-19 | 24 |  | 2023-12-13 | 2023-12-19 | 5d |
| 26 | 3.4 | Design F neurons |  | 5d | 2023-12-20 | 2023-12-26 | 25 |  | 2023-12-20 | 2023-12-26 | 5d |
| 27 | 3.5 | Design InE, InF |  | 5d | 2023-12-27 | 2024-01-04 | 26 |  | 2023-12-27 | 2024-01-04 | 5d |
| 28 | 3.6 | Design 2nd leg |  | 10d | 2024-01-05 | 2024-01-18 | 27 |  | 2024-01-05 | 2024-01-18 | 10d |
| 29 | 3.7 | Order PCBs |  | 10d | 2024-01-19 | 2024-02-01 | 28 |  | 2024-01-19 | 2024-02-01 | 10d |
| 30 | 3.8 | Deliver PCBs |  | 15d | 2024-02-02 | 2024-02-26 | 29 |  | 2024-02-02 | 2024-02-26 | 15d |
| 31 | 3.9 | Assemble PCBs |  | 20d | 2024-02-27 | 2024-03-25 | 29, 30 |  | 2024-02-27 | 2024-03-25 | 20d |
| 32 | 3.10 | Completed mem neurons | milestone | 0d | 2024-03-26 | 2024-03-26 | 31 |  | 2024-03-26 | 2024-03-26 | 0d |

| ID | WBS | Task | Type | Duration | Start | Finish | Predecessors | Baseline start | Baseline finish | Baseline duration |
| --- | --- | --- | --- | --- | --- | --- | --- | --- | --- | --- |
| 33 | 4 | **Neurons+mems integration** |  | 62d | 2024-03-26 | 2024-06-21 | 1, 12, 22 | 2024-03-26 | 2024-06-21 | 62d |
| 34 | 4.1 | deliver mem neurons |  | 20d | 2024-03-26 | 2024-04-22 |  | 2024-03-26 | 2024-04-22 | 20d |
| 35 | 4.2 | integrate 1 neuron 1 mem |  | 5d | 2024-04-23 | 2024-04-29 | 34 | 2024-04-23 | 2024-04-29 | 5d |
| 36 | 4.3 | integrate 1 RG |  | 10d | 2024-04-30 | 2024-05-15 | 35 | 2024-04-30 | 2024-05-15 | 10d |
| 37 | 4.4 | test integrated RG |  | 7d | 2024-05-16 | 2024-05-24 | 36 | 2024-05-16 | 2024-05-24 | 7d |
| 38 | 4.5 | integrate 1 leg |  | 5d | 2024-05-27 | 2024-05-31 | 37 | 2024-05-27 | 2024-05-31 | 5d |
| 39 | 4.6 | test 1 leg |  | 5d | 2024-06-03 | 2024-06-07 | 38 | 2024-06-03 | 2024-06-07 | 5d |
| 40 | 4.7 | integrate 2 legs |  | 5d | 2024-06-10 | 2024-06-14 | 39 | 2024-06-10 | 2024-06-14 | 5d |
| 41 | 4.8 | test 2 legs |  | 5d | 2024-06-17 | 2024-06-21 | 40 | 2024-06-17 | 2024-06-21 | 5d |
| 42 | 4.9 | integrated 2 legs | milestone | 0d | 2024-06-24 | 2024-06-24 | 41 | 2024-06-24 | 2024-06-24 | 0d |
| 43 | 5 | **Rat validation** |  | 31d | 2024-06-24 | 2024-08-05 | 33 | 2024-06-24 | 2024-08-05 | 31d |
| 44 | 5.1 | deliver mem cpg |  | 20d | 2024-06-24 | 2024-07-19 |  | 2024-06-24 | 2024-07-19 | 20d |
| 45 | 5.2 | test mem cpg |  | 5d | 2024-07-22 | 2024-07-26 | 44 | 2024-07-22 | 2024-07-26 | 5d |
| 46 | 5.3 | integrate outs (F+E) |  | 3d | 2024-07-29 | 2024-07-31 | 45 | 2024-07-29 | 2024-07-31 | 3d |
| 47 | 5.4 | validate outs on rat |  | 3d | 2024-08-01 | 2024-08-05 | 46 | 2024-08-01 | 2024-08-05 | 3d |
| 48 | 5.5 | validated mem cpg | milestone | 0d | 2024-08-06 | 2024-08-06 | 47 | 2024-08-06 | 2024-08-06 | 0d |
